# rt-smart中短期研发任务列表

How a schedule from a web Gantt chart changed from version to version. A marks actual dates.

## Version 1 (saved 2024-03-12)

| ID | WBS | Task | Duration | Start | Finish |
| --- | --- | --- | --- | --- | --- |
| 2 | 1 | **系统性能指标测试** | 8d | 2024-03-13 | 2024-03-22 |
| 3 | 1.1 | **系统吞吐指标** | 1d | 2024-03-13 | 2024-03-13 |
| 4 |  | dhrystone CPU跑分 | 1d | 2024-03-13 | 2024-03-13 |
| 5 |  | mbw内存指标 | 1d | 2024-03-13 | 2024-03-13 |
| 6 |  | iozone 文件系统、磁盘IO指标（注意参数来区分） | 1d | 2024-03-13 | 2024-03-13 |
| 7 |  | unixbeach套件指标 | 1d | 2024-03-13 | 2024-03-13 |
| 8 |  | iperf 千兆网吞吐 | 1d | 2024-03-13 | 2024-03-13 |
| 9 | 1.2 | **实时性指标测试** | 2d | 2024-03-18 | 2024-03-19 |
| 10 |  | 中断实时性指标 | 1d | 2024-03-18 | 2024-03-18 |
| 11 |  | cyclictest指标 | 1d | 2024-03-18 | 2024-03-18 |
| 12 |  | 任务抖动 | 2d | 2024-03-18 | 2024-03-19 |
| 13 | 1.3 | **参考对比OS** | 3d | 2024-03-20 | 2024-03-22 |
| 14 |  | linux必选 | 3d | 2024-03-20 | 2024-03-22 |
| 15 |  | Zephyr（dhrystone,irq lantency,任务抖动,iperf） | 2d | 2024-03-20 | 2024-03-21 |
| 16 |  | freeRTOS（dhrystone,irq lantency,任务抖动,iperf） | 1d | 2024-03-22 | 2024-03-22 |
| 17 |  | threadx（dhrystone,irq lantency,任务抖动,iperf） | 1d | 2024-03-22 | 2024-03-22 |
| 18 | 2 | **内部调度器优化** | 7d | 2024-03-14 | 2024-03-22 |
| 19 |  | 优化follow主线内核 | 1d | 2024-03-14 | 2024-03-14 |
| 20 |  | 优化做到上述各指标有明显优势 | 7d | 2024-03-14 | 2024-03-22 |
| 21 | 3 | **用户态性能指标** | 5d | 2024-03-18 | 2024-03-22 |
| 22 |  | 时间相关接口精度测试（nanosleep类/clock类/time类） | 2d | 2024-03-18 | 2024-03-19 |
| 23 |  | 用户态多进程吞吐测试（10、100、1000个....任务创建速度、实时性指标测试） | 3d | 2024-03-20 | 2024-03-22 |
| 24 |  | 可考虑解决用户态iperf跑分低的问题，给出优化方案再决定是否优化 | 1d | 2024-03-20 | 2024-03-20 |
| 25 |  | pthread 性能测试（实时性测试，吞吐测试） | 2d | 2024-03-21 | 2024-03-22 |
| 26 | 4 | **驱动框架完善** | 1d | 2024-03-12 | 2024-03-12 |
| 27 |  | PCIe驱动代码完善（可扩展以太网、WiFi/BT、SSD、B2B） | 1d | 2024-03-12 | 2024-03-12 |
| 28 |  | 新设备树框架各个模块设计、使用文档完善 | 1d | 2024-03-12 | 2024-03-12 |
| 29 | 5 | **自动化测试** | 1d | 2024-03-12 | 2024-03-12 |
| 30 |  | 内核测试用例整理分类 | 1d | 2024-03-12 | 2024-03-12 |
| 31 |  | 梳理内核模块测试用例 | 1d | 2024-03-12 | 2024-03-12 |
| 32 |  | 完善内核模块测试用例（如signalfd/eventfd/epoll/timerfd/uds等等） | 1d | 2024-03-12 | 2024-03-12 |
| 33 |  | 所有测试用例上CI，能出测试报告 | 1d | 2024-03-12 | 2024-03-12 |
| 34 |  | 计划好重大feature、patch、timeline做好回归测试、压力测试 | 1d | 2024-03-12 | 2024-03-12 |
| 35 |  | 搭建固定长久的自动化测试环境，分别可建立多平台，多模式，多配置覆盖全，例如：STM32/RK35xx/A1000/QEMU，重点关注SMP=1，SMP=N的情况 | 1d | 2024-03-12 | 2024-03-12 |
| 36 | 6 | **模块组件完善** | 1d | 2024-03-12 | 2024-03-12 |
| 37 |  | 内部LWIP整理 | 1d | 2024-03-12 | 2024-03-12 |
| 38 |  | ukernel整理（开放procfs，是否开放signalfd/eventfd这类系统功能模块？） | 1d | 2024-03-12 | 2024-03-12 |
| 39 | 7 | **系统工具完善** | 1d | 2024-03-12 | 2024-03-12 |
| 40 |  | 将之前做的工具类完善（kasan/ftrace/strace/gdb/coredump） | 1d | 2024-03-12 | 2024-03-12 |
| 41 |  | 整理出给用户能看懂的使用手册 | 1d | 2024-03-12 | 2024-03-12 |
| 42 | 8 | **POSIX兼容性完善** | 1d | 2024-03-12 | 2024-03-12 |
| 43 |  | 评估musl libc是否需要先升级再做POSIX完善 | 1d | 2024-03-12 | 2024-03-12 |
| 44 |  | 评估内核libc是否重构 | 1d | 2024-03-12 | 2024-03-12 |
| 45 |  | 评估系统调用内核态实现整理优化 | 1d | 2024-03-12 | 2024-03-12 |
| 46 |  | 基于以上三点评估或推进情况，接着推进POSIX兼容PSE53为目标去完善 | 1d | 2024-03-12 | 2024-03-12 |
| 47 |  | 收集所有可用的posix测试用例，整理，修复，达到可用，并有文档查阅、索引对应到具体用例 | 1d | 2024-03-12 | 2024-03-12 |
| 48 |  | 建立POSIX内部测试环境，可出报告 | 1d | 2024-03-12 | 2024-03-12 |
| 49 |  | 先从开源测试用例下手，再考虑推进POSIX官方认证流程 | 1d | 2024-03-12 | 2024-03-12 |
| 50 | 9 | **应用程序生态方向** | 1d | 2024-03-12 | 2024-03-12 |
| 51 |  | tmux会近期推进完 | 1d | 2024-03-12 | 2024-03-12 |
| 52 |  | busybox 部分功能可继续考虑推进完善（如和procfs功能相关的一些命令） | 1d | 2024-03-12 | 2024-03-12 |
| 53 |  | 能通过CI构建出通用的基本版本smart的rootfs(busybox(支持init、ash、jobcontrol等特性)，ldso，其它必要的依赖lib项、资源文件，目录结构等) | 1d | 2024-03-12 | 2024-03-12 |

## Version 2 (saved 2024-03-12)

Last finish 2024-03-22 → 2024-04-02 (+11d). Complete tasks 0 → 1.

Changed:

| ID | Task | Start | Finish | Duration | Complete |
| --- | --- | --- | --- | --- | --- |
| 26 | **驱动框架完善** | 2024-03-12 → 2024-03-13 (+1d) | 2024-03-12 → 2024-03-26 (+14d) | 1d → 10d |  |
| 27 | PCIe驱动代码完善（可扩展以太网、WiFi/BT、SSD、B2B） | 2024-03-12 → 2024-03-13 (+1d) | 2024-03-12 → 2024-03-26 (+14d) | 1d → 10d |  |
| 28 | 新设备树框架各个模块设计、使用文档完善 | 2024-03-12 → 2024-03-13 (+1d) | 2024-03-12 → 2024-03-13 (+1d) |  |  |
| 29 | **自动化测试** | 2024-03-12 → 2024-03-13 (+1d) | 2024-03-12 → 2024-04-02 (+21d) | 1d → 15d | 0% → 6% |
| 30 | 所有测试用例上CI，能出测试报告 | 2024-03-12 → 2024-03-13 (+1d) | 2024-03-12 → 2024-03-19 (+7d) | 1d → 5d |  |
| 31 | 内核测试用例整理分类 | 2024-03-12 → 2024-03-25 (+13d) | 2024-03-12 → 2024-03-25 (+13d) |  |  |
| 32 | 梳理内核模块测试用例 | 2024-03-12 → 2024-03-26 (+14d) | 2024-03-12 → 2024-03-26 (+14d) |  |  |
| 33 | 完善内核模块测试用例（如signalfd/eventfd/epoll/timerfd/uds等等） | 2024-03-12 → 2024-03-26 (+14d) | 2024-03-12 → 2024-03-28 (+16d) | 1d → 3d |  |
| 34 | 计划好重大feature、patch、timeline做好回归测试、压力测试 | 2024-03-12 → 2024-03-13 (+1d) | 2024-03-12 → 2024-03-13 (+1d) |  | 0% → 100% |
| 35 | 搭建固定长久的自动化测试环境，分别可建立多平台，多模式，多配置覆盖全，例如：STM32/RK35xx/A1000/QEMU，重点关注SMP=1，SMP=N的情况 | 2024-03-12 → 2024-03-27 (+15d) | 2024-03-12 → 2024-04-02 (+21d) | 1d → 5d |  |
| 36 | **模块组件完善** | 2024-03-12 → 2024-03-18 (+6d) | 2024-03-12 → 2024-03-26 (+14d) | 1d → 7d |  |
| 37 | 内部LWIP整理 | 2024-03-12 → 2024-03-18 (+6d) | 2024-03-12 → 2024-03-20 (+8d) | 1d → 3d |  |
| 38 | ukernel整理（开放procfs，是否开放signalfd/eventfd这类系统功能模块？） | 2024-03-12 → 2024-03-25 (+13d) | 2024-03-12 → 2024-03-26 (+14d) | 1d → 2d |  |
| 39 | **系统工具完善** | 2024-03-12 → 2024-03-13 (+1d) | 2024-03-12 → 2024-03-13 (+1d) |  |  |
| 40 | 将之前做的工具类完善（kasan/ftrace/strace/gdb/coredump） | 2024-03-12 → 2024-03-13 (+1d) | 2024-03-12 → 2024-03-13 (+1d) |  |  |
| 41 | 整理出给用户能看懂的使用手册 | 2024-03-12 → 2024-03-13 (+1d) | 2024-03-12 → 2024-03-13 (+1d) |  |  |
| 42 | **POSIX兼容性完善** | 2024-03-12 → 2024-03-13 (+1d) | 2024-03-12 → 2024-03-13 (+1d) |  |  |
| 43 | 评估musl libc是否需要先升级再做POSIX完善 | 2024-03-12 → 2024-03-13 (+1d) | 2024-03-12 → 2024-03-13 (+1d) |  |  |
| 44 | 评估内核libc是否重构 | 2024-03-12 → 2024-03-13 (+1d) | 2024-03-12 → 2024-03-13 (+1d) |  |  |
| 45 | 评估系统调用内核态实现整理优化 | 2024-03-12 → 2024-03-13 (+1d) | 2024-03-12 → 2024-03-13 (+1d) |  |  |
| 46 | 基于以上三点评估或推进情况，接着推进POSIX兼容PSE53为目标去完善 | 2024-03-12 → 2024-03-13 (+1d) | 2024-03-12 → 2024-03-13 (+1d) |  |  |
| 47 | 收集所有可用的posix测试用例，整理，修复，达到可用，并有文档查阅、索引对应到具体用例 | 2024-03-12 → 2024-03-13 (+1d) | 2024-03-12 → 2024-03-13 (+1d) |  |  |
| 48 | 建立POSIX内部测试环境，可出报告 | 2024-03-12 → 2024-03-13 (+1d) | 2024-03-12 → 2024-03-13 (+1d) |  |  |
| 49 | 先从开源测试用例下手，再考虑推进POSIX官方认证流程 | 2024-03-12 → 2024-03-13 (+1d) | 2024-03-12 → 2024-03-13 (+1d) |  |  |
| 50 | **应用程序生态方向** | 2024-03-12 → 2024-03-13 (+1d) | 2024-03-12 → 2024-03-22 (+10d) | 1d → 8d |  |
| 51 | tmux会近期推进完 | 2024-03-12 → 2024-03-13 (+1d) | 2024-03-12 → 2024-03-19 (+7d) | 1d → 5d |  |
| 52 | 能通过CI构建出通用的基本版本smart的rootfs(busybox(支持init、ash、jobcontrol等特性)，ldso，其它必要的依赖lib项、资源文件，目录结构等) | 2024-03-12 → 2024-03-20 (+8d) | 2024-03-12 → 2024-03-22 (+10d) | 1d → 3d |  |
| 53 | busybox 部分功能可继续考虑推进完善（如和procfs功能相关的一些命令） | 2024-03-12 → 2024-03-13 (+1d) | 2024-03-12 → 2024-03-13 (+1d) |  |  |
